# 船厂智能监控项目

Schedule from a web Gantt chart, 2026-05-20 to 2026-08-17.
Saturdays and Sundays are off

## Schedule

| ID | WBS | Task | Duration | Start | Finish | Predecessors | inPeople | Status |
| --- | --- | --- | --- | --- | --- | --- | --- | --- |
| 2 | 1 | 系统总体设计方案编写 | 2d | 2026-05-20 | 2026-05-21 |  | 陈建炜 |  |
| 3 | 2 | 系统总体设计方案评审 | 1d | 2026-05-22 | 2026-05-22 |  | 陈建炜、贺文飞 |  |
| 4 | 3 | 测试环境硬件准备（摄像头采购及安装、GPU服务器准备） | 6d | 2026-05-25 | 2026-06-01 |  | 刘欢、张春林 |  |
| 5 | 4 | 测试环境基础环境搭建（关系型数据库、向量数据库、对象存储、缓存数据库搭建、消息队列） | 2d | 2026-05-25 | 2026-05-26 |  | 刘栋 |  |
| 6 | 5 | 后端系统框架以及表结构创建 | 1d | 2026-05-27 | 2026-05-27 |  | 刘栋 |  |
| 7 | 6 | **桌面应用设计** | 13d | 2026-05-27 | 2026-06-12 |  | 张红娟 |  |
| 8 | 6.1 | 前端框架搭建、用户体系和权限控制功能开发 | 1d | 2026-05-27 | 2026-05-27 |  | 张红娟 | waiting |
| 9 | 6.2 | 设备管理页面开发 | 3d | 2026-05-28 | 2026-06-01 | 8 | 张红娟 | waiting |
| 10 | 6.3 | 事件告警页面开发 | 3d | 2026-06-02 | 2026-06-04 | 9 | 张红娟 | waiting |
| 11 | 6.4 | 配置管理页面开发 | 3d | 2026-06-05 | 2026-06-09 | 10 | 张红娟 | waiting |
| 12 | 6.5 | 记录管理页面开发 | 3d | 2026-06-10 | 2026-06-12 | 11 | 张红娟 | waiting |
| 13 | 7 | **后端功能详细设计** | 12d | 2026-05-27 | 2026-06-11 |  | 刘栋 |  |
| 14 | 7.1 | 用户体系和权限功能开发 | 1d | 2026-05-27 | 2026-05-27 |  | 刘栋 | waiting |
| 15 | 7.2 | 设备管理相关功能后端开发 | 3d | 2026-05-28 | 2026-06-01 | 14 | 刘栋 | waiting |
| 16 | 7.3 | 事件告警相关功能后端开发 | 3d | 2026-06-02 | 2026-06-04 | 15 | 刘栋 | waiting |
| 17 | 7.4 | 配置管理相关功能后端开发 | 3d | 2026-06-05 | 2026-06-09 | 16 | 刘栋 | waiting |
| 18 | 7.5 | 记录管理相关功能后端开发 | 2d | 2026-06-10 | 2026-06-11 | 17 | 刘栋 | waiting |
| 19 | 8 | **智能分析功能详细设计** | 21d | 2026-06-12 | 2026-07-10 |  | 陈建炜 | waiting |
| 20 | 8.1 | 视频流获取功能开发 | 1d | 2026-06-12 | 2026-06-12 |  | 陈建炜 | waiting |
| 21 | 8.2 | 人员检测跟踪以及身份识别功能开发 | 4d | 2026-06-15 | 2026-06-18 | 20 | 陈建炜 | waiting |
| 22 | 8.3 | 人员进出监控与在岗状态功能开发 | 1d | 2026-06-19 | 2026-06-19 | 21 | 陈建炜 | waiting |
| 23 | 8.4 | 电子围栏与越界管理功能开发 | 1d | 2026-06-22 | 2026-06-22 | 22 | 陈建炜 | waiting |
| 24 | 8.5 | 班组点名与人员统计功能开发 | 1d | 2026-06-23 | 2026-06-23 | 23 | 陈建炜 | waiting |
| 25 | 8.6 | 集装箱进出与堆放监控功能开发 | 2d | 2026-06-24 | 2026-06-25 | 24 | 陈建炜 | waiting |
| 26 | 8.7 | 小物件流转追踪功能开发 | 2d | 2026-06-26 | 2026-06-29 | 25 | 陈建炜 | waiting |
| 27 | 8.8 | 垃圾桶分类考核功能开发 | 2d | 2026-06-30 | 2026-07-01 | 26 | 陈建炜 | waiting |
| 28 | 8.9 | 物品占位与通道管控功能开发 | 1d | 2026-07-02 | 2026-07-02 | 27 | 陈建炜 | waiting |
| 29 | 8.10 | 空间冲突预警功能开发 | 2d | 2026-07-03 | 2026-07-06 | 28 | 陈建炜 | waiting |
| 30 | 8.11 | 异常时段报警功能开发 | 1d | 2026-07-07 | 2026-07-07 | 29 | 陈建炜 | waiting |
| 31 | 8.12 | 安全事件识别功能开发 | 2d | 2026-07-08 | 2026-07-09 | 30 | 陈建炜 | waiting |
| 32 | 8.13 | 敏感物品和军人信息保护功能开发 | 1d | 2026-07-10 | 2026-07-10 | 31 | 陈建炜 | waiting |
| 33 | 9 | 目标检测算法数据标注 | 7d | 2026-06-15 | 2026-06-23 |  | 刘栋、张红娟、张春林 |  |
| 34 | 10 | 目标检测算法训练 | 5d | 2026-06-29 | 2026-07-03 |  | 陈建炜 |  |
| 35 | 11 | 垃圾分类视频标注 | 2d | 2026-06-24 | 2026-06-25 | 33 | 刘栋、张红娟、张春林 | waiting |
| 36 | 12 | 垃圾分类模型训练 | 3d | 2026-07-06 | 2026-07-08 | 34 | 陈建炜 | waiting |
| 37 | 13 | 系统集成测试 | 15d | 2026-07-09 | 2026-07-29 |  | 刘欢、张春林 |  |
| 38 | 14 | 系统性能测试 | 5d | 2026-07-09 | 2026-07-15 |  | 黄斌 |  |
| 39 | 15 | 测试问题修复 | 5d | 2026-07-30 | 2026-08-05 | 37 | 刘栋、张红娟、陈建炜 | waiting |
| 40 | 16 | 系统回归测试 | 4d | 2026-08-06 | 2026-08-11 | 39 | 刘欢、张春林、黄斌 | waiting |
| 41 | 17 | 部署手册验证 | 3d | 2026-08-12 | 2026-08-14 | 40 | 陈建炜 | waiting |
| 42 | 18 | 系统部署 | 1d | 2026-08-17 | 2026-08-17 | 41 |  | waiting |

Notes:
- 33: 至少需要每一类1000个样本，类别包括普通人、军人、垃圾桶、集装箱、火灾、敏感物品（装备）
- 35: 至少需要每一类500个视频，类别包括扔垃圾、从垃圾桶旁边走过
